# Cronograma_Preliminar

How a schedule from MS Project changed from version to version. A marks actual dates.

## Version 1 (saved 2016-11-07)

Note of the change: CRUD Curso Concluido.

| ID | WBS | Task | Duration | Start | Finish | Predecessors | Complete | Total float | Constraint |
| --- | --- | --- | --- | --- | --- | --- | --- | --- | --- |
| 1 | 1 | **Projeto Sala de Aula** | 25.78d? | 2016-10-03 08:00 A | 2016-11-07 16:12 |  | 48% | 0d |  |
| 2 | 1.1 | **Prospecção** | 2.81d | 2016-10-03 08:00 A | 2016-10-05 16:30 A |  | 100% |  |  |
| 3 | 1.1.1 | **Proposta Técnica** | 2d | 2016-10-03 08:00 A | 2016-10-05 08:15 A |  | 100% |  |  |
| 4 |  | Estudar Domínio de Aplicação | 0.25d | 2016-10-03 08:00 A | 2016-10-03 10:00 A |  | 100% |  | start no earlier than 2016-10-03 08:00 |
| 5 |  | Redigir Proposta Técnica | 0.21d | 2016-10-04 14:00 A | 2016-10-04 15:40 A | 4 | 100% |  | start no earlier than 2016-10-03 08:00 |
| 6 |  | Revisar Proposta Técnica | 0.03d | 2016-10-05 08:00 A | 2016-10-05 08:15 A | 5 | 100% |  | start no earlier than 2016-10-03 08:00 |
| 7 | 1.1.2 | **Estimativa Preliminar de Tamanho** | 0.19d | 2016-10-05 08:30 A | 2016-10-05 10:30 A |  | 100% |  |  |
| 8 |  | Estimar Tamanho do Projeto | 0.12d | 2016-10-05 08:30 A | 2016-10-05 09:30 A | 6 | 100% |  | start no earlier than 2016-10-03 08:00 |
| 9 |  | Revisar Estimativa de Tamanho do Projeto | 0.12d | 2016-10-05 09:30 A | 2016-10-05 10:30 A | 8 | 100% |  | start no earlier than 2016-10-03 08:00 |
| 10 | 1.1.3 | **Estimativa Preliminar de Cronograma e Orçamento** | 0.62d | 2016-10-05 10:30 A | 2016-10-05 16:30 A |  | 100% |  |  |
| 11 |  | Elaborar Cronograma e Orçamento Preliminares | 0.38d | 2016-10-05 10:30 A | 2016-10-05 15:30 A | 9 | 100% |  | start no earlier than 2016-10-03 08:00 |
| 12 |  | Revisar Cronograma e Orçamento Preliminares | 0.12d | 2016-10-05 15:30 A | 2016-10-05 16:30 A | 11 | 100% |  | start no earlier than 2016-10-03 08:00 |
| 13 | 1.2 | **Análise** | 8.31d? | 2016-10-05 16:30 A | 2016-10-18 09:57 A | 2 | 100% |  |  |
| 14 | 1.2.1 | **Documento de Requisitos** | 3.31d? | 2016-10-05 16:30 A | 2016-10-11 09:57 A |  | 100% |  |  |
| 15 |  | Elaborar o Documento de Requisitos | 0.93d? | 2016-10-05 16:30 A | 2016-10-06 15:54 A | 12 | 100% |  | start no earlier than 2016-10-03 08:00 |
| 16 |  | Revisar Documentos de Requisitos | 1.46d? | 2016-10-07 16:17 A | 2016-10-11 09:57 A | 15 | 100% |  | start no earlier than 2016-10-03 08:00 |
| 17 | 1.2.2 | **Matriz de Rastreabilidade Bidirecional** | 3.83d? | 2016-10-12 11:17 A | 2016-10-18 09:57 A |  | 100% |  |  |
| 18 |  | Elaborar MRB | 0.67d? | 2016-10-12 11:17 A | 2016-10-13 08:37 A | 16 | 100% |  | start no earlier than 2016-10-03 08:00 |
| 19 |  | Revisar MRB | 2.5d? | 2016-10-13 15:57 A | 2016-10-18 09:57 A | 18 | 100% |  | start no earlier than 2016-10-03 08:00 |
| 20 | 1.3 | **Projeto** | 1.14d? | 2016-10-18 09:57 A | 2016-10-19 11:05 A | 13 | 100% |  |  |
| 21 | 1.3.1 | **Diagrama de Classes** | 1.14d? | 2016-10-18 09:57 A | 2016-10-19 11:05 A |  | 100% |  |  |
| 22 |  | Elaborar Diagrama de Classes | 0.29d? | 2016-10-18 09:57 A | 2016-10-18 14:14 A | 16 | 100% |  | start no earlier than 2016-10-04 08:00 |
| 23 |  | Revisar Diagrama de Classes | 0.5d? | 2016-10-18 17:05 A | 2016-10-19 11:05 A | 22 | 100% |  | start no earlier than 2016-10-03 08:00 |
| 24 |  | Atualizar MRB | 0.44d? | 2016-10-18 09:57 A | 2016-10-18 15:27 A | 19, 23 | 100% |  | start no earlier than 2016-10-03 08:00 |
| 25 | 1.3.2 | **Modelo entidade relacionamento** | 0.88d? | 2016-10-18 09:57 A | 2016-10-19 08:57 A |  | 100% |  |  |
| 26 |  | Elaborar MER | 0.38d? | 2016-10-18 09:57 A | 2016-10-18 14:57 A | 19 | 100% |  | start no earlier than 2016-10-03 08:00 |
| 27 |  | Revisar MER | 0.25d? | 2016-10-18 16:57 A | 2016-10-19 08:57 A |  | 100% |  | start no earlier than 2016-10-03 08:00 |
| 28 | 1.4 | **Planejamento** | 3.08d? | 2016-10-19 10:08 A | 2016-10-24 10:45 A | 20 | 100% |  |  |
| 29 | 1.4.1 | **Reunir-se com a equipe desenvolvedora** | 2.54d? | 2016-10-19 10:08 A | 2016-10-21 15:25 A |  | 100% |  |  |
| 30 |  | Explanar o cronograma, diagrama de classes e o MER com a equipe | 0.24d? | 2016-10-19 10:08 A | 2016-10-19 14:05 A | 27 | 100% |  | start no earlier than 2016-10-03 08:00 |
| 31 |  | Discutir os métodos de desenvolvimento | 1d? | 2016-10-19 14:05 A | 2016-10-20 14:05 A | 30 | 100% |  | start no earlier than 2016-10-03 08:00 |
| 32 |  | Dividir as tarefas com a equipe | 0.67d? | 2016-10-20 14:05 A | 2016-10-21 09:25 A | 31 | 100% |  | start no earlier than 2016-10-03 08:00 |
| 33 |  | Explanar o que se espera do projeto | 0.62d? | 2016-10-21 09:25 A | 2016-10-21 15:25 A | 32 | 100% |  | start no earlier than 2016-10-03 08:00 |
| 34 | 1.4.2 | **Conferir a infraestrutura da empresa** | 0.54d? | 2016-10-21 15:25 A | 2016-10-24 10:45 A |  | 100% |  |  |
| 35 |  | Verificar quais softwares irão ser usados e ajustar as ferramentas | 0.67d? | 2016-10-21 15:25 A | 2016-10-24 10:45 A | 33 | 100% |  | start no earlier than 2016-10-03 08:00 |
| 36 | 1.5 | **Desenvolvimento** | 9.11d? | 2016-10-24 10:45 A | 2016-11-04 11:38 | 28 | 25% | 0d |  |
| 37 | 1.5.1 | **Release 01** | 3.81d | 2016-10-24 10:45 A | 2016-10-28 09:15 A |  | 100% |  |  |
| 38 | 1.5.1.1 | **Implementação** | 1.5d | 2016-10-24 10:45 A | 2016-10-25 15:45 A |  | 100% |  |  |
| 39 |  | Implementar RFC01 - Controlar Usuário | 1.62d | 2016-10-24 10:45 A | 2016-10-25 15:45 A |  | 100% |  | start no earlier than 2016-10-03 08:00 |
| 40 |  | Implementar RFC02 - Controlar Professor | 0.31d | 2016-10-24 10:45 A | 2016-10-24 15:15 A |  | 100% |  | start no earlier than 2016-10-03 08:00 |
| 41 | 1.5.1.2 | **Teste** | 3d | 2016-10-25 09:15 A | 2016-10-28 09:15 A |  | 100% |  |  |
| 42 |  | Testar RFC01 - Controlar Usuário | 0.12d | 2016-10-28 08:15 A | 2016-10-28 09:15 A | 39 | 100% |  | start no earlier than 2016-10-03 08:00 |
| 43 |  | Testar RFC02 - Controlar Professor | 0.12d | 2016-10-25 09:15 A | 2016-10-25 10:15 A | 40 | 100% |  | start no earlier than 2016-10-03 08:00 |
| 44 | 1.5.2 | **Release 02** | 8.17d? | 2016-10-25 10:15 A | 2016-11-04 11:38 |  | 56% | 0d |  |
| 45 | 1.5.2.1 | **Implementação** | 5.8d? | 2016-10-25 10:15 A | 2016-11-01 17:38 |  | 68% | 0d |  |
| 46 |  | Implementar RFC03 - Controlar Estudantes | 1.47d? | 2016-10-25 10:15 A | 2016-10-26 16:00 A | 43 | 100% |  | start no earlier than 2016-10-03 08:00 |
| 47 |  | Implementar RFC04 - Controlar Curso | 0.75d? | 2016-10-25 10:15 | 2016-10-26 09:15 | 43 |  | 1.09d | start no earlier than 2016-10-03 08:00 |
| 48 |  | Implementar RNFC01 - Autenticar Usuários | 2.69d? | 2016-10-25 10:15 A | 2016-11-01 17:38 | 43 | 69% | 0d |  |
| 49 | 1.5.2.2 | **Teste** | 7.3d? | 2016-10-26 09:15 A | 2016-11-04 11:38 |  | 17% | 0d |  |
| 50 |  | Testar RFC03 - Controlar Estudantes | 0.25d | 2016-11-01 10:15 A | 2016-11-01 14:15 A | 46 | 100% |  | start no earlier than 2016-10-03 08:00 |
| 51 |  | Testar RFC04 - Controlar Curso | 0.25d | 2016-10-26 09:15 | 2016-10-26 11:15 | 47 |  | 1.09d | start no earlier than 2016-10-03 08:00 |
| 52 |  | Testar RNFC01 - Autenticar Usuários | 1d? | 2016-11-01 17:38 | 2016-11-04 11:38 | 48 |  | 0d |  |
| 53 | 1.5.3 | **Release 03** | 5.38d? | 2016-10-26 11:15 | 2016-11-02 15:15 |  |  | 1.22d |  |
| 54 | 1.5.3.1 | **Implementação** | 3.5d? | 2016-10-26 11:15 | 2016-10-31 16:15 |  |  | 1.22d |  |
| 55 |  | Implementar RFC05 - Controlar Matéria | 0.62d? | 2016-10-26 11:15 | 2016-10-26 17:15 | 51 |  | 1.09d |  |
| 56 |  | Implementar RFC06 - Controlar Tópico | 0.5d | 2016-10-26 17:15 | 2016-10-27 11:15 | 55 |  | 1.09d | start no earlier than 2016-10-03 08:00 |
| 57 |  | Implementar RFC07 - Controlar Questões | 0.62d | 2016-10-27 11:15 | 2016-10-27 17:15 | 56 |  | 1.09d | start no earlier than 2016-10-03 08:00 |
| 58 |  | Implementar RFC08 - Controlar Universidades | 1d | 2016-10-27 17:15 | 2016-10-31 08:15 | 57 |  | 1.59d | start no earlier than 2016-10-03 08:00 |
| 59 |  | Implementar RNFC02 - Autenticar por perfil de Usuário | 0.75d | 2016-10-31 08:15 | 2016-10-31 16:15 | 58 |  | 1.59d |  |
| 60 | 1.5.3.2 | **Teste** | 4.75d? | 2016-10-26 17:15 | 2016-11-02 15:15 |  |  | 1.67d |  |
| 61 |  | Testar RFC05 - Controlar Matéria | 1d? | 2016-10-26 17:15 | 2016-10-28 11:15 | 55 |  | 3.12d |  |
| 62 |  | Testar RFC06 - Controlar Tópico | 0.25d | 2016-10-27 11:15 | 2016-10-27 15:15 | 56 |  | 4d | start no earlier than 2016-10-03 08:00 |
| 63 |  | Testar RFC07 - Controlar Questões | 0.25d? | 2016-11-01 08:15 | 2016-11-01 10:15 | 57 |  | 1.28d | start no earlier than 2016-10-03 08:00 |
| 64 |  | Testar RFC08 - Controlar Universidades | 0.25d? | 2016-10-31 08:15 | 2016-10-31 10:15 | 58 |  | 1.62d | start no earlier than 2016-10-03 08:00 |
| 65 |  | Testar RNFC02 - Autenticar por perfil de Usuário | 1d? | 2016-11-01 15:15 | 2016-11-02 15:15 | 59 |  | 1.67d |  |
| 66 | 1.5.4 | **Release 04** | 7.44d? | 2016-10-24 10:45 | 2016-11-02 15:15 |  |  | 1.67d |  |
| 67 | 1.5.4.1 | **Implementação** | 6d? | 2016-10-24 15:15 | 2016-11-01 15:15 |  |  | 2.67d |  |
| 68 |  | Implementar RFC09 - Gerar Atividades | 0.88d? | 2016-10-31 10:15 | 2016-11-01 10:15 | 64 |  | 1.12d | start no earlier than 2016-10-03 08:00 |
| 69 |  | Implementar RFC10 - Ranking | 0.75d? | 2016-10-31 14:15 | 2016-11-01 10:15 | 64 |  | 1.12d | start no earlier than 2016-10-03 08:00 |
| 70 |  | Implementar RFC11- Relatório de Questões | 1d? | 2016-10-31 16:15 | 2016-11-01 15:15 | 64 |  | 0.62d | start no earlier than 2016-10-03 08:00 |

| ID | WBS | Task | Duration | Start | Finish | Predecessors | Total float | Constraint |
| --- | --- | --- | --- | --- | --- | --- | --- | --- |
| 71 |  | Implementar RNF03 - Gerar log de falhas | 1.94d? | 2016-10-24 15:15 | 2016-10-28 11:45 |  | 3.19d |  |
| 72 |  | Implementar RNFC04 - Gerar log de ações de Usuários | 0.62d? | 2016-10-31 10:15 | 2016-10-31 16:15 | 64 | 1.59d |  |
| 73 | 1.5.4.2 | **Teste** | 7.44d? | 2016-10-24 10:45 | 2016-11-02 15:15 |  | 1.67d |  |
| 74 |  | Testar RFC09 - Gerar Atividades | 0.25d? | 2016-11-01 10:15 | 2016-11-01 14:15 | 68 | 1.12d | start no earlier than 2016-10-03 08:00 |
| 75 |  | Testar RFC10 - Ranking | 0.25d? | 2016-11-01 10:15 | 2016-11-01 14:15 | 69 | 1.12d | start no earlier than 2016-10-03 08:00 |
| 76 |  | Testar RFC11 - Relatório de Questões | 0.25d? | 2016-11-01 15:15 | 2016-11-01 17:15 | 70 | 0.62d | start no earlier than 2016-10-03 08:00 |
| 77 |  | Testar RNFC03 - Gerar log de falhas | 1d? | 2016-10-24 10:45 | 2016-10-28 14:45 |  | 3.06d |  |
| 78 |  | Testar RNFC04 - Gerar log de ações de Usuários | 1d? | 2016-11-01 15:15 | 2016-11-02 15:15 | 72 | 1.67d |  |
| 79 | 1.6 | **Monitoramento e Controle** | 0.42d? | 2016-11-04 11:38 | 2016-11-04 15:58 | 36 | 0d |  |
| 80 |  | Acompanhar Projeto | 0.29d? | 2016-11-04 11:38 | 2016-11-04 15:58 | 76 | 0d | start no earlier than 2016-10-03 08:00 |
| 81 | 1.7 | **Fechamento** | 0.78d | 2016-11-04 15:58 | 2016-11-07 14:12 | 79 | 0d |  |
| 82 |  | Revisar Projeto | 0.75d | 2016-11-04 15:58 | 2016-11-07 11:58 | 80 | 0.15d | start no earlier than 2016-10-03 08:00 |
| 83 |  | Fazer um comparativo com a Proposta Técnica | 0.78d | 2016-11-04 15:58 | 2016-11-07 14:12 | 80 | 0d | start no earlier than 2016-10-03 08:00 |
| 84 | 1.8 | **Controle de Mudanças** | 0.25d | 2016-11-07 14:12 | 2016-11-07 16:12 | 81 | 0d |  |
| 85 |  | Realizar mudanças se o projeto não estiver dentro do desejado | 0.25d | 2016-11-07 14:12 | 2016-11-07 16:12 | 83 | 0d | start no earlier than 2016-10-03 08:00 |

## Version 2 (saved 2016-12-02)

Note of the change: Finalização.

Last finish 2016-11-07 → 2016-11-09 (+2d). Complete tasks 27 → 39.

Changed:

| ID | Task | Start | Finish | Duration | Complete | Total float | Predecessors | Other |
| --- | --- | --- | --- | --- | --- | --- | --- | --- |
| 1 | **Projeto Sala de Aula** |  | 2016-11-07 16:12 → 2016-11-09 14:33 (+2d) | 25.78d? → 27.57d? | 48% → 69% |  |  |  |
| 36 | **Desenvolvimento** |  | 2016-11-04 11:38 → 2016-11-08 10:00 (+4d) | 9.11d? → 10.9d? | 25% → 59% |  |  |  |
| 44 | **Release 02** |  | 2016-11-04 11:38 → 2016-11-02 09:15 A (-2d) | 8.17d? → 5.88d? | 56% → 100% | 0d → none |  |  |
| 45 | **Implementação** |  | 2016-11-01 17:38 → 2016-10-31 08:15 A (-1d) | 5.8d? → 3.84d? | 68% → 100% | 0d → none |  |  |
| 47 | Implementar RFC04 - Controlar Curso | 2016-10-25 10:15 A | 2016-10-26 09:15 A |  | 0% → 100% | 1.09d → none |  |  |
| 48 | Implementar RNFC01 - Autenticar Usuários |  | 2016-11-01 17:38 → 2016-10-31 08:15 A (-1d) |  | 69% → 100% | 0d → none |  |  |
| 49 | **Teste** |  | 2016-11-04 11:38 → 2016-11-02 09:15 A (-2d) | 7.3d? → 5d? | 17% → 100% | 0d → none |  |  |
| 51 | Testar RFC04 - Controlar Curso | 2016-10-26 09:15 A | 2016-10-26 11:15 A |  | 0% → 100% | 1.09d → none |  |  |
| 52 | Testar RNFC01 - Autenticar Usuários | 2016-11-01 17:38 → 2016-10-28 14:15 A (-4d) | 2016-11-04 11:38 → 2016-11-02 09:15 A (-2d) |  | 0% → 100% | 0d → none |  |  |
| 53 | **Release 03** | 2016-10-26 11:15 → 2016-10-24 15:15 A (-2d) | 2016-11-02 15:15 → 2016-11-02 13:53 | 5.38d? → 6.83d? | 0% → 77% | 1.22d → 0d |  |  |
| 54 | **Implementação** | 2016-10-26 11:15 → 2016-10-24 15:15 A (-2d) |  | 3.5d? → 5.12d? | 0% → 65% | 1.22d → 0d |  |  |
| 55 | Implementar RFC05 - Controlar Matéria | 2016-10-26 11:15 A | 2016-10-26 17:15 A |  | 0% → 100% | 1.09d → none |  |  |
| 56 | Implementar RFC06 - Controlar Tópico | 2016-10-26 17:15 A | 2016-10-27 11:15 A |  | 0% → 100% | 1.09d → none |  |  |
| 57 | Implementar RFC08 - Controlar Universidades | 2016-10-27 17:15 → 2016-10-24 15:15 (-3d) | 2016-10-31 08:15 → 2016-10-28 09:53 (-3d) |  |  | 1.59d → 0.09d | 66 → none |  |
| 58 | Implementar RNFC02 - Autenticar por perfil de Usuário | 2016-10-31 08:15 A | 2016-10-31 16:15 A |  | 0% → 100% | 1.59d → none |  |  |
| 59 | **Teste** | 2016-10-26 17:15 A | 2016-11-02 15:15 → 2016-11-02 13:53 | 4.75d? → 4.58d? | 0% → 90% | 1.67d → 0d |  |  |
| 60 | Testar RFC05 - Controlar Matéria | 2016-10-26 17:15 A | 2016-10-28 11:15 → 2016-10-27 17:15 A (-1d) |  | 0% → 100% | 3.12d → none |  |  |
| 61 | Testar RFC06 - Controlar Tópico | 2016-10-27 11:15 A | 2016-10-27 15:15 A |  | 0% → 100% | 4d → none |  |  |
| 62 | Testar RFC08 - Controlar Universidades | 2016-10-31 08:15 → 2016-10-28 09:53 (-3d) | 2016-10-31 10:15 → 2016-10-28 11:53 (-3d) |  |  | 1.62d → 0.09d |  |  |
| 63 | Testar RNFC02 - Autenticar por perfil de Usuário | 2016-11-01 15:15 → 2016-11-01 13:53 A | 2016-11-02 15:15 → 2016-11-02 13:53 A |  | 0% → 100% | 1.67d → none |  |  |
| 64 | **Release 04** | 2016-10-24 10:45 A | 2016-11-02 15:15 → 2016-11-08 10:00 (+6d) | 7.44d? → 10.9d? | 0% → 13% | 1.67d → 0d |  |  |
| 65 | **Implementação** | 2016-10-24 15:15 → 2016-10-24 10:45 A | 2016-11-01 15:15 → 2016-11-07 13:53 (+6d) | 6d? → 10.27d? | 0% → 15% | 2.67d → 0.64d |  |  |
| 66 | Implementar RFC07 - Controlar Questões | 2016-10-27 11:15 → 2016-10-24 10:45 A (-3d) | 2016-10-27 17:15 → 2016-10-25 10:45 A (-2d) | 0.62d → 1d? | 0% → 100% | 1.09d → none | 56 → none | constraint start no earlier than 2016-10-03 08:00 → none; resources Fábio; Vinícius → none; baseline start 2016-10-26 14:45 → none; baseline finish 2016-10-28 14:15 → none |
| 67 | Implementar RFC09 - Gerar Atividades | 2016-10-31 10:15 → 2016-11-02 13:53 (+2d) | 2016-11-01 10:15 → 2016-11-07 13:53 (+6d) | 0.88d? → 1d? |  | 1.12d → 0.34d |  |  |
| 68 | Implementar RFC10 - Ranking | 2016-10-31 14:15 → 2016-10-28 17:53 (-3d) | 2016-11-01 10:15 → 2016-11-01 08:15 | 0.75d? → 1d? |  | 1.12d → 4.97d |  |  |
| 69 | Implementar RFC11- Relatório de Questões | 2016-10-31 16:15 → 2016-10-28 11:53 (-3d) | 2016-11-01 15:15 → 2016-11-01 10:15 |  |  | 0.62d → 4.84d |  |  |
| 70 | Implementar RNF03 - Gerar log de falhas | 2016-10-24 15:15 → 2016-10-25 09:15 (+1d) | 2016-10-28 11:45 → 2016-10-31 10:00 (+3d) | 1.94d? → 1.75d? |  | 3.19d → 6d |  |  |
| 71 | Implementar RNFC04 - Gerar log de ações de Usuários | 2016-10-31 10:15 → 2016-10-28 11:53 (-3d) | 2016-10-31 16:15 → 2016-10-31 17:53 | 0.62d? → 0.95d? |  | 1.59d → 4.01d |  |  |
| 72 | **Teste** | 2016-10-24 10:45 A | 2016-11-02 15:15 → 2016-11-08 10:00 (+6d) | 7.44d? → 10.9d? | 0% → 8% | 1.67d → 0d |  |  |
| 73 | Testar RFC07 - Controlar Questões | 2016-11-01 08:15 → 2016-11-01 10:15 A | 2016-11-01 10:15 → 2016-11-01 14:15 A |  | 0% → 100% | 1.28d → none | 66 → none |  |
| 74 | Testar RFC09 - Gerar Atividades | 2016-11-01 10:15 → 2016-11-08 08:00 (+7d) | 2016-11-01 14:15 → 2016-11-08 10:00 (+7d) |  |  | 1.12d → 0d |  |  |
| 75 | Testar RFC10 - Ranking | 2016-11-01 10:15 → 2016-11-01 08:15 | 2016-11-01 14:15 → 2016-11-01 10:15 |  |  | 1.12d → 4.97d |  |  |
| 76 | Testar RFC11 - Relatório de Questões | 2016-11-01 15:15 → 2016-11-01 14:15 | 2016-11-01 17:15 → 2016-11-01 16:15 |  |  | 0.62d → 4.34d |  |  |
| 77 | Testar RNFC03 - Gerar log de falhas |  | 2016-10-28 14:45 → 2016-10-31 17:30 (+3d) |  |  | 3.06d → 5.19d |  |  |
| 78 | Testar RNFC04 - Gerar log de ações de Usuários | 2016-11-01 15:15 → 2016-11-01 10:15 | 2016-11-02 15:15 → 2016-11-02 10:15 |  |  | 1.67d → 3.97d |  |  |
| 79 | **Monitoramento e Controle** | 2016-11-04 11:38 → 2016-11-08 10:00 (+4d) | 2016-11-04 15:58 → 2016-11-08 14:20 (+4d) |  |  |  |  |  |
| 80 | Acompanhar Projeto | 2016-11-04 11:38 → 2016-11-08 10:00 (+4d) | 2016-11-04 15:58 → 2016-11-08 14:20 (+4d) |  |  |  |  |  |
| 81 | **Fechamento** | 2016-11-04 15:58 → 2016-11-08 14:20 (+4d) | 2016-11-07 14:12 → 2016-11-09 10:33 (+2d) | 0.78d → 0.65d |  |  |  |  |
| 82 | Revisar Projeto | 2016-11-04 15:58 → 2016-11-08 14:20 (+4d) | 2016-11-07 11:58 → 2016-11-09 10:20 (+2d) |  |  | 0.15d → 0.03d |  |  |
| 83 | Fazer um comparativo com a Proposta Técnica | 2016-11-04 15:58 → 2016-11-08 14:20 (+4d) | 2016-11-07 14:12 → 2016-11-09 10:33 (+2d) |  |  |  |  |  |
| 84 | **Controle de Mudanças** | 2016-11-07 14:12 → 2016-11-09 10:33 (+2d) | 2016-11-07 16:12 → 2016-11-09 14:33 (+2d) | 0.25d → 0.38d |  |  |  |  |
| 85 | Realizar mudanças se o projeto não estiver dentro do desejado | 2016-11-07 14:12 → 2016-11-09 10:33 (+2d) | 2016-11-07 16:12 → 2016-11-09 14:33 (+2d) | 0.25d → 0.32d |  |  |  |  |
