# Cronograma_Preliminar

How a schedule from MS Project changed from version to version. A marks actual dates.

## Version 1 (saved 2016-10-11)

Note of the change: Commit inicial.

| ID | WBS | Task | Duration | Start | Finish | Predecessors | Total float |
| --- | --- | --- | --- | --- | --- | --- | --- |
| 1 | 1 | **Projeto Clínica Médica** | 35.05d? | 2016-08-22 | 2016-10-10 |  | 0d |
| 2 | 1.1 | **Prospecção** | 2.25d | 2016-08-22 | 2016-08-24 |  | 0.15d |
| 3 | 1.1.1 | **Proposta Técnica** | 2.25d | 2016-08-22 | 2016-08-24 |  | 0.15d |
| 4 |  | Estudar Domínio de Aplicação | 0.25d | 2016-08-24 | 2016-08-24 |  | 0.15d |
| 5 |  | Redigir Proposta Técnica | 1d | 2016-08-22 | 2016-08-22 |  | 0.9d |
| 6 |  | Revisar Proposta Técnica | 0.12d | 2016-08-23 | 2016-08-23 | 5 | 0.52d |
| 7 | 1.1.2 | **Estimativa Preliminar de Tamanho** | 0.25d | 2016-08-22 | 2016-08-22 |  | 1.5d |
| 8 |  | Estimar Tamanho do Projeto | 0.12d | 2016-08-22 | 2016-08-22 |  | 1.5d |
| 9 |  | Revisar Estimativa de Tamanho do Projeto | 0.12d | 2016-08-22 | 2016-08-22 | 8 | 1.5d |
| 10 | 1.1.3 | **Estimativa Preliminar de Cronograma e Orçamento** | 0.38d | 2016-08-22 | 2016-08-22 |  | 1.38d |
| 11 |  | Elaborar Cronograma e Orçamento Preliminares | 0.25d | 2016-08-22 | 2016-08-22 | 9 | 1.38d |
| 12 |  | Revisar Cronograma e Orçamento Preliminares | 0.12d | 2016-08-22 | 2016-08-22 | 11 | 1.65d |
| 13 | 1.2 | **Análise** | 6.98d? | 2016-08-24 | 2016-09-02 | 2 | 0.15d |
| 14 | 1.2.1 | **Documento de Requisitos** | 6.98d? | 2016-08-24 | 2016-09-02 |  | 0.15d |
| 15 |  | Elaborar o Documento de Requisitos | 6.1d? | 2016-08-24 | 2016-09-01 |  | 0.15d |
| 16 |  | Revisar Documentos de Requisitos | 0.88d? | 2016-09-01 | 2016-09-02 | 15 | 0.15d |
| 17 | 1.2.2 | **Matriz de Rastreabilidade Bidirecional** | 2.62d? | 2016-08-24 | 2016-08-26 |  | 4.5d |
| 18 |  | Elaborar MRB | 1.62d? | 2016-08-24 | 2016-08-25 |  | 4.5d |
| 19 |  | Revisar MRB | 1d? | 2016-08-25 | 2016-08-26 | 18 | 4.5d |
| 20 | 1.3 | **Projeto** | 4.02d? | 2016-09-02 | 2016-09-08 | 19 | 0d |
| 21 | 1.3.1 | **Diagrama de Classes** | 2.52d? | 2016-09-02 | 2016-09-06 |  | 0d |
| 22 |  | Elaborar Diagrama de Classes | 1d? | 2016-09-02 | 2016-09-05 | 13 | 0.15d |
| 23 |  | Revisar Diagrama de Classes | 0.5d? | 2016-09-05 | 2016-09-05 | 22 | 0d |
| 24 |  | Atualizar MRB | 0.88d? | 2016-09-05 | 2016-09-06 | 23 | 0d |
| 25 | 1.3.2 | **Modelo entidade relacionamento** | 1.5d? | 2016-09-06 | 2016-09-08 |  | 0d |
| 26 |  | Elaborar MER | 1d? | 2016-09-06 | 2016-09-07 | 24 | 0d |
| 27 |  | Revisar MER | 0.5d? | 2016-09-07 | 2016-09-08 | 26 | 0d |
| 28 | 1.4 | **Planejamento** | 7.25d? | 2016-09-08 | 2016-09-19 | 27 | 0d |
| 29 | 1.4.1 | **Reunir-se com a equipe desenvolvedora** | 6.25d? | 2016-09-08 | 2016-09-16 |  | 0d |
| 30 |  | Explanar o cronograma, diagrama de classes e o MER com a equipe | 2.25d? | 2016-09-08 | 2016-09-12 | 27 | 0d |
| 31 |  | Discutir os métodos de desenvolvimento | 1d? | 2016-09-12 | 2016-09-13 | 30 | 0d |
| 32 |  | Dividir as tarefas com a equipe | 1d? | 2016-09-13 | 2016-09-14 | 31 | 0d |
| 33 |  | Explanar o que se espera do projeto | 1d? | 2016-09-14 | 2016-09-15 | 32 | 0d |
| 34 |  | Motivar a equipe | 1d? | 2016-09-15 | 2016-09-16 | 33 | 0d |
| 35 | 1.4.2 | **Conferir a infraestrutura da empresa** | 7.25d? | 2016-09-08 | 2016-09-19 |  | 6.25d |
| 36 |  | Verificar se haverá necessidade de compra de equipamentos e/ou softwares | 1d? | 2016-09-08 | 2016-09-09 | 9 | 20.8d |
| 37 |  | Alocar a equipe no seu local de trabalho | 1d? | 2016-09-16 | 2016-09-19 | 34 | 0d |
| 38 | 1.5 | **Desenvolvimento** | 14.55d? | 2016-09-19 | 2016-10-10 | 37 | 0d |
| 39 | 1.5.1 | **Release 01** | 14.55d? | 2016-09-19 | 2016-10-10 | 37 | 0d |
| 40 | 1.5.1.1 | **Implementação** | 6.72d | 2016-09-19 | 2016-09-28 |  | 0d |
| 41 |  | Implementar RFC01 | 2.25d | 2016-09-22 | 2016-09-27 | 37 | 3.88d |
| 42 |  | Implementar RFC02 | 2.25d | 2016-09-19 | 2016-09-28 | 37 | 5.78d |
| 43 |  | Implementar RFC03 | 2.25d | 2016-09-20 | 2016-09-26 | 37 | 6.12d |
| 44 |  | Implementar RFC04 | 2.25d | 2016-09-19 | 2016-09-22 | 37 | 0d |
| 45 |  | Implementar RFC05 | 2.25d | 2016-09-19 | 2016-09-23 | 37 | 5.75d |
| 46 |  | Implementar RFC06 | 1.38d | 2016-09-19 | 2016-09-20 | 37 | 1.12d |
| 47 |  | Implementar RFC07 | 1.38d | 2016-09-19 | 2016-09-26 | 37 | 9.25d |
| 48 |  | Implementar RFC08 | 0.88d | 2016-09-22 | 2016-09-22 | 44 | 7.5d |
| 49 |  | Implementar RFC09 | 0.88d | 2016-09-19 | 2016-09-20 | 37 | 2.25d |
| 50 |  | Implementar RFC10 | 0.88d | 2016-09-19 | 2016-09-20 | 37 | 3.92d |
| 51 |  | Implementar RFC11 | 0.75d | 2016-09-21 | 2016-09-21 | 37 | 7.17d |
| 52 |  | Implementar RFC12 | 0.75d | 2016-09-19 | 2016-09-20 | 37 | 8.75d |
| 53 | 1.5.1.2 | **Teste** | 10.05d? | 2016-09-26 | 2016-10-10 |  | 0d |
| 54 |  | Testar RFC01 | 1.12d? | 2016-10-03 | 2016-10-04 | 41 | 3.92d |
| 55 |  | Testar RFC02 | 1.12d | 2016-09-29 | 2016-09-30 | 42 | 5.8d |
| 56 |  | Testar RFC03 | 1.12d | 2016-09-28 | 2016-09-29 | 43 | 6.12d |
| 57 |  | Testar RFC04 | 1.12d | 2016-10-05 | 2016-10-10 | 44 | 0d |
| 58 |  | Testar RFC05 | 1.12d | 2016-09-27 | 2016-09-30 | 45 | 5.25d |
| 59 |  | Testar RFC06 | 0.62d? | 2016-09-29 | 2016-09-29 | 46 | 6.42d |
| 60 |  | Testar RFC07 | 0.62d? | 2016-09-26 | 2016-09-26 | 47 | 9.25d |
| 61 |  | Testar RFC08 | 0.62d? | 2016-09-26 | 2016-09-28 | 48 | 7.67d |
| 62 |  | Testar RFC09 | 0.88d? | 2016-10-04 | 2016-10-05 | 49 | 2.38d |
| 63 |  | Testar RFC10 | 0.88d | 2016-09-26 | 2016-09-27 | 50 | 8.25d |
| 64 |  | Testar RFC11 | 0.88d? | 2016-09-28 | 2016-09-28 | 51 | 7.17d |
| 65 |  | Testar RFC12 | 0.88d? | 2016-09-26 | 2016-09-26 | 52 | 9.18d |
| 66 | 1.5.2 | **Release 02** | 11d? | 2016-09-20 | 2016-10-05 |  | 1.95d |
| 67 | 1.5.2.1 | **Implementação** | 5.62d? | 2016-09-20 | 2016-09-27 |  | 1.95d |
| 68 |  | Implementar RFC13 | 0.88d? | 2016-09-27 | 2016-09-27 | 44 | 7.42d |
| 69 |  | Implementar RFC14 | 0.88d? | 2016-09-21 | 2016-09-22 | 46 | 1.32d |
| 70 |  | Implementar RFC15 | 0.88d? | 2016-09-21 | 2016-09-22 | 49 | 6.38d |

| ID | WBS | Task | Duration | Start | Finish | Predecessors | Total float |
| --- | --- | --- | --- | --- | --- | --- | --- |
| 71 |  | Implementar RFC16 | 0.88d | 2016-09-20 | 2016-09-21 | 50 | 7.75d |
| 72 |  | Implementar RFC17 | 0.88d | 2016-09-20 | 2016-09-21 | 49, 50 | 3.55d |
| 73 | 1.5.2.2 | **Teste** | 9.75d | 2016-09-21 | 2016-10-05 |  | 2.67d |
| 74 |  | Testar RFC13 | 0.62d | 2016-09-28 | 2016-09-28 | 68 | 7.42d |
| 75 |  | Testar RFC14 | 0.62d | 2016-09-26 | 2016-10-05 | 69 | 2.67d |
| 76 |  | Testar RFC15 | 0.62d | 2016-09-28 | 2016-09-28 | 70 | 7d |
| 77 |  | Testar RFC16 | 0.62d | 2016-09-22 | 2016-09-29 | 71 | 6.8d |
| 78 |  | Testar RFC17 | 0.62d | 2016-09-21 | 2016-09-22 | 72 | 3.55d |
| 79 | 1.6 | **Monitoramento e Controle** | 1.5d? | 2016-09-22 | 2016-09-23 | 78 | 3.55d |
| 80 |  | Acompanhar Projeto | 1.5d? | 2016-09-22 | 2016-09-23 | 78 | 3.55d |
| 81 | 1.7 | **Fechamento** | 4.5d | 2016-09-23 | 2016-09-30 | 80 | 3.55d |
| 82 |  | Revisar Projeto | 2.25d | 2016-09-23 | 2016-09-27 | 80 | 3.55d |
| 83 |  | Fazer um comparativo com a Proposta Técnica | 2.25d | 2016-09-28 | 2016-09-30 | 82 | 3.55d |
| 84 | 1.8 | **Controle de Mudanças** | 2.25d | 2016-09-30 | 2016-10-04 | 83 | 3.55d |
| 85 |  | Realizar mudanças se o projeto não estiver dentro do desejado | 2.25d | 2016-09-30 | 2016-10-04 | 83 | 3.55d |

## Version 2 (saved 2016-10-29)

Note of the change: Merge pull request #6 from hunkOraboni/ViniciusPaginaInicial

Last finish 2016-10-10 → 2016-11-01 (+22d). Complete tasks 0 → 21.

Added:

| ID | Task | Duration | Start | Finish | Predecessors | Resources |
| --- | --- | --- | --- | --- | --- | --- |
| 49 | Implementar RNFC01 | 0.88d? | 2016-10-25 11:15 | 2016-10-27 10:15 | 43 | Gabriel; Juliana |
| 54 | Testar RNFC01 | 1d? | 2016-10-28 14:15 | 2016-10-31 14:15 | 49 | Vinícius [25%] |
| 55 | **Release 03** | 3.53d? | 2016-10-26 08:45 | 2016-10-31 14:15 |  |  |
| 56 | **Implementação** | 2.53d? | 2016-10-26 08:45 | 2016-10-28 14:15 |  |  |
| 60 | Implementar RNFC02 | 1d | 2016-10-26 08:45 | 2016-10-27 08:45 | 53 | Gabriel; Juliana |
| 61 | Implementar RNFC03 | 0.62d? | 2016-10-26 08:45 | 2016-10-26 14:45 | 53 | Fábio; Vinícius |
| 62 | **Teste** | 2.94d? | 2016-10-26 14:45 | 2016-10-31 14:15 |  |  |
| 66 | Testar RNFC02 | 1d? | 2016-10-28 14:15 | 2016-10-31 14:15 | 60 | Vinícius [25%] |
| 67 | Testar RNFC03 | 1d? | 2016-10-28 10:45 | 2016-10-31 10:45 | 61 | Fábio [25%] |
| 68 | **Release 04** | 2.75d? | 2016-10-26 16:45 | 2016-10-31 14:45 |  |  |
| 69 | **Implementação** | 1.38d? | 2016-10-26 16:45 | 2016-10-28 10:45 |  |  |
| 73 | Implementar RNFC04 | 0.5d? | 2016-10-26 16:45 | 2016-10-27 10:45 | 65 | Fábio; Vinícius |
| 74 | **Teste** | 1.44d? | 2016-10-28 10:15 | 2016-10-31 14:45 |  |  |
| 78 | Testar RNFC04 | 1d? | 2016-10-28 14:15 | 2016-10-31 14:15 | 73 | Vinícius [25%] |

Removed: 34 Motivar a equipe; 37 Alocar a equipe no seu local de trabalho; 52 Implementar RFC12; 65 Testar RFC12; 68 Implementar RFC13; 69 Implementar RFC14; 70 Implementar RFC15; 71 Implementar RFC16; 72 Implementar RFC17; 74 Testar RFC13; 75 Testar RFC14; 76 Testar RFC15; 77 Testar RFC16; 78 Testar RFC17

Changed:

| ID | Task | Start | Finish | Duration | Complete | Total float | Predecessors | Other |
| --- | --- | --- | --- | --- | --- | --- | --- | --- |
| 1 | **Projeto Sala de Aula** | 2016-08-22 → 2016-10-03 08:00 A (+42d) | 2016-10-10 → 2016-11-01 17:19 (+22d) | 35.05d? → 21.92d? | 0% → 37% |  |  | was named Projeto Clínica Médica; baseline start none → 2016-10-03 08:00; baseline finish none → 2016-11-01 17:19 |
| 2 | **Prospecção** | 2016-08-22 → 2016-10-03 08:00 A (+42d) | 2016-08-24 → 2016-10-05 16:30 A (+42d) | 2.25d → 2.81d | 0% → 100% | 0.15d → none |  | baseline start none → 2016-10-03 08:00; baseline finish none → 2016-10-05 16:30 |
| 3 | **Proposta Técnica** | 2016-08-22 → 2016-10-03 08:00 A (+42d) | 2016-08-24 → 2016-10-05 08:15 A (+42d) | 2.25d → 2d | 0% → 100% | 0.15d → none |  | baseline start none → 2016-10-03 08:00; baseline finish none → 2016-10-05 08:15 |
| 4 | Estudar Domínio de Aplicação | 2016-08-24 → 2016-10-03 08:00 A (+40d) | 2016-08-24 → 2016-10-03 10:00 A (+40d) |  | 0% → 100% | 0.15d → none |  | constraint none → start no earlier than 2016-10-03 08:00; resources Vinícius → Renam [50%]; Fábio; Gabriel; Juliana; Vinícius; baseline start none → 2016-10-03 08:00; baseline finish none → 2016-10-03 10:00 |
| 5 | Redigir Proposta Técnica | 2016-08-22 → 2016-10-04 14:00 A (+43d) | 2016-08-22 → 2016-10-04 15:40 A (+43d) | 1d → 0.21d | 0% → 100% | 0.9d → none | none → 4 | constraint none → start no earlier than 2016-10-03 08:00; resources Vinícius → Fábio; Juliana; Vinícius; Gabriel; Renam; baseline start none → 2016-10-04 14:00; baseline finish none → 2016-10-04 15:40 |
| 6 | Revisar Proposta Técnica | 2016-08-23 → 2016-10-05 08:00 A (+43d) | 2016-08-23 → 2016-10-05 08:15 A (+43d) | 0.12d → 0.03d | 0% → 100% | 0.52d → none |  | constraint none → start no earlier than 2016-10-03 08:00; resources Antônio → Fábio; Gabriel; Juliana; Renam; baseline start none → 2016-10-05 08:00; baseline finish none → 2016-10-05 08:15 |
| 7 | **Estimativa Preliminar de Tamanho** | 2016-08-22 → 2016-10-05 08:30 A (+44d) | 2016-08-22 → 2016-10-05 10:30 A (+44d) | 0.25d → 0.19d | 0% → 100% | 1.5d → none |  | baseline start none → 2016-10-05 08:30; baseline finish none → 2016-10-05 10:30 |
| 8 | Estimar Tamanho do Projeto | 2016-08-22 → 2016-10-05 08:30 A (+44d) | 2016-08-22 → 2016-10-05 09:30 A (+44d) |  | 0% → 100% | 1.5d → none | none → 6 | constraint none → start no earlier than 2016-10-03 08:00; resources Vinícius → Gabriel; baseline start none → 2016-10-05 08:30; baseline finish none → 2016-10-05 09:30 |
| 9 | Revisar Estimativa de Tamanho do Projeto | 2016-08-22 → 2016-10-05 09:30 A (+44d) | 2016-08-22 → 2016-10-05 10:30 A (+44d) |  | 0% → 100% | 1.5d → none |  | constraint none → start no earlier than 2016-10-03 08:00; resources Adler → Vinícius; baseline start none → 2016-10-05 09:30; baseline finish none → 2016-10-05 10:30 |
| 10 | **Estimativa Preliminar de Cronograma e Orçamento** | 2016-08-22 → 2016-10-05 10:30 A (+44d) | 2016-08-22 → 2016-10-05 16:30 A (+44d) | 0.38d → 0.62d | 0% → 100% | 1.38d → none |  | baseline start none → 2016-10-05 10:30; baseline finish none → 2016-10-05 16:30 |
| 11 | Elaborar Cronograma e Orçamento Preliminares | 2016-08-22 → 2016-10-05 10:30 A (+44d) | 2016-08-22 → 2016-10-05 15:30 A (+44d) | 0.25d → 0.38d | 0% → 100% | 1.38d → none |  | constraint none → start no earlier than 2016-10-03 08:00; resources Antônio → Fábio; baseline start none → 2016-10-05 10:30; baseline finish none → 2016-10-05 15:30 |
| 12 | Revisar Cronograma e Orçamento Preliminares | 2016-08-22 → 2016-10-05 15:30 A (+44d) | 2016-08-22 → 2016-10-05 16:30 A (+44d) |  | 0% → 100% | 1.65d → none |  | constraint none → start no earlier than 2016-10-03 08:00; resources Adler → Juliana; baseline start none → 2016-10-05 15:30; baseline finish none → 2016-10-05 16:30 |
| 13 | **Análise** | 2016-08-24 → 2016-10-05 16:30 A (+42d) | 2016-09-02 → 2016-10-18 09:57 A (+46d) | 6.98d? → 8.31d? | 0% → 100% | 0.15d → none |  | baseline start none → 2016-10-05 16:30; baseline finish none → 2016-10-18 09:57 |
| 14 | **Documento de Requisitos** | 2016-08-24 → 2016-10-05 16:30 A (+42d) | 2016-09-02 → 2016-10-11 09:57 A (+39d) | 6.98d? → 3.31d? | 0% → 100% | 0.15d → none |  | baseline start none → 2016-10-05 16:30; baseline finish none → 2016-10-11 09:57 |
| 15 | Elaborar o Documento de Requisitos | 2016-08-24 → 2016-10-05 16:30 A (+42d) | 2016-09-01 → 2016-10-06 15:54 A (+35d) | 6.1d? → 0.93d? | 0% → 100% | 0.15d → none | none → 12 | constraint none → start no earlier than 2016-10-03 08:00; resources Antônio [23.5%]; Alexandre [23.5%]; Marcos [23.5%] → Fábio [67.6%]; Juliana [67.6%]; Vinícius [67.6%]; baseline start none → 2016-10-05 16:30; baseline finish none → 2016-10-06 15:54 |
| 16 | Revisar Documentos de Requisitos | 2016-09-01 → 2016-10-07 16:17 A (+36d) | 2016-09-02 → 2016-10-11 09:57 A (+39d) | 0.88d? → 1.46d? | 0% → 100% | 0.15d → none |  | constraint none → start no earlier than 2016-10-03 08:00; resources Adler → Gabriel [14.3%]; Juliana [14.3%]; Renam [14.3%]; baseline start none → 2016-10-07 16:17; baseline finish none → 2016-10-11 09:57 |
| 17 | **Matriz de Rastreabilidade Bidirecional** | 2016-08-24 → 2016-10-12 11:17 A (+49d) | 2016-08-26 → 2016-10-18 09:57 A (+53d) | 2.62d? → 3.83d? | 0% → 100% | 4.5d → none |  | baseline start none → 2016-10-12 11:17; baseline finish none → 2016-10-18 09:57 |
| 18 | Elaborar MRB | 2016-08-24 → 2016-10-12 11:17 A (+49d) | 2016-08-25 → 2016-10-13 08:37 A (+49d) | 1.62d? → 0.67d? | 0% → 100% | 4.5d → none | none → 16 | constraint none → start no earlier than 2016-10-03 08:00; resources José → Gabriel; Renam; Vinícius; baseline start none → 2016-10-12 11:17; baseline finish none → 2016-10-13 08:37 |
| 19 | Revisar MRB | 2016-08-25 → 2016-10-13 15:57 A (+49d) | 2016-08-26 → 2016-10-18 09:57 A (+53d) | 1d? → 2.5d? | 0% → 100% | 4.5d → none |  | constraint none → start no earlier than 2016-10-03 08:00; resources Adler [87.5%] → Fábio [25%]; Juliana [25%]; baseline start none → 2016-10-13 15:57; baseline finish none → 2016-10-18 09:57 |
| 20 | **Projeto** | 2016-09-02 → 2016-10-18 09:00 (+46d) | 2016-09-08 → 2016-10-19 10:08 (+41d) | 4.02d? → 1.14d? | 0% → 100% | 0d → none | 19 → 13 | baseline start none → 2016-10-18 09:00; baseline finish none → 2016-10-19 10:08 |
| 21 | **Diagrama de Classes** | 2016-09-02 → 2016-10-18 09:57 A (+46d) | 2016-09-06 → 2016-10-19 11:05 A (+43d) | 2.52d? → 1.14d? | 0% → 100% | 0d → none |  | baseline start none → 2016-10-18 09:57; baseline finish none → 2016-10-19 11:05 |
| 22 | Elaborar Diagrama de Classes | 2016-09-02 → 2016-10-18 09:57 A (+46d) | 2016-09-05 → 2016-10-18 14:14 A (+43d) | 1d? → 0.29d? | 0% → 100% | 0.15d → none | 13 → 16 | constraint none → start no earlier than 2016-10-04 08:00; resources José → Gabriel [87.5%]; Vinícius [87.5%]; baseline start none → 2016-10-18 09:57; baseline finish none → 2016-10-18 14:14 |
| 23 | Revisar Diagrama de Classes | 2016-09-05 → 2016-10-18 17:05 A (+43d) | 2016-09-05 → 2016-10-19 11:05 A (+44d) |  | 0% → 100% | 0d → none |  | constraint none → start no earlier than 2016-10-03 08:00; resources Antônio [50%] → Fábio [25%]; Renam [25%]; baseline start none → 2016-10-18 17:05; baseline finish none → 2016-10-19 11:05 |
| 24 | Atualizar MRB | 2016-09-05 → 2016-10-18 09:57 A (+43d) | 2016-09-06 → 2016-10-18 15:27 A (+42d) | 0.88d? → 0.44d? | 0% → 100% | 0d → none | 23 → 19, 23 | constraint none → start no earlier than 2016-10-03 08:00; resources Maria → Fábio [28.6%]; Juliana [28.6%]; baseline start none → 2016-10-18 09:57; baseline finish none → 2016-10-18 15:27 |
| 25 | **Modelo entidade relacionamento** | 2016-09-06 → 2016-10-18 09:57 A (+42d) | 2016-09-08 → 2016-10-19 08:57 A (+41d) | 1.5d? → 0.88d? | 0% → 100% | 0d → none |  | baseline start none → 2016-10-18 09:57; baseline finish none → 2016-10-19 08:57 |
| 26 | Elaborar MER | 2016-09-06 → 2016-10-18 09:57 A (+42d) | 2016-09-07 → 2016-10-18 14:57 A (+41d) | 1d? → 0.38d? | 0% → 100% | 0d → none | 24 → 19 | constraint none → start no earlier than 2016-10-03 08:00; resources Maria [50%] → Fábio [50%]; Vinícius [50%]; baseline start none → 2016-10-18 09:57; baseline finish none → 2016-10-18 14:57 |
| 27 | Revisar MER | 2016-09-07 → 2016-10-18 16:57 A (+41d) | 2016-09-08 → 2016-10-19 08:57 A (+41d) | 0.5d? → 0.25d? | 0% → 100% | 0d → none | 26 → none | constraint none → start no earlier than 2016-10-03 08:00; resources Adler [25%] → Gabriel [25%]; Renam [25%]; baseline start none → 2016-10-18 16:57; baseline finish none → 2016-10-19 08:57 |
| 28 | **Planejamento** | 2016-09-08 → 2016-10-19 10:08 A (+41d) | 2016-09-19 → 2016-10-24 10:45 A (+35d) | 7.25d? → 3.08d? | 0% → 100% | 0d → none | 27 → 20 | baseline start none → 2016-10-19 10:08; baseline finish none → 2016-10-24 10:45 |
| 29 | **Reunir-se com a equipe desenvolvedora** | 2016-09-08 → 2016-10-19 10:08 A (+41d) | 2016-09-16 → 2016-10-21 15:25 A (+35d) | 6.25d? → 2.54d? | 0% → 100% | 0d → none |  | baseline start none → 2016-10-19 10:08; baseline finish none → 2016-10-21 15:25 |
| 30 | Explanar o cronograma, diagrama de classes e o MER com a equipe | 2016-09-08 → 2016-10-19 10:08 A (+41d) | 2016-09-12 → 2016-10-19 14:05 A (+37d) | 2.25d? → 0.24d? | 0% → 100% | 0d → none |  | constraint none → start no earlier than 2016-10-03 08:00; resources Vinícius → Fábio; Vinícius; baseline start none → 2016-10-19 10:08; baseline finish none → 2016-10-19 14:05 |
| 31 | Discutir os métodos de desenvolvimento | 2016-09-12 → 2016-10-19 14:05 A (+37d) | 2016-09-13 → 2016-10-20 14:05 A (+37d) |  | 0% → 100% | 0d → none |  | constraint none → start no earlier than 2016-10-03 08:00; resources Grupo Externo → Gabriel [50%]; Renam [50%]; baseline start none → 2016-10-19 14:05; baseline finish none → 2016-10-20 14:05 |
| 32 | Dividir as tarefas com a equipe | 2016-09-13 → 2016-10-20 14:05 A (+37d) | 2016-09-14 → 2016-10-21 09:25 A (+37d) | 1d? → 0.67d? | 0% → 100% | 0d → none |  | constraint none → start no earlier than 2016-10-03 08:00; resources Vinícius [25%] → Gabriel [37.5%]; Renam [37.5%]; baseline start none → 2016-10-20 14:05; baseline finish none → 2016-10-21 09:25 |
| 33 | Explanar o que se espera do projeto | 2016-09-14 → 2016-10-21 09:25 A (+37d) | 2016-09-15 → 2016-10-21 15:25 A (+36d) | 1d? → 0.62d? | 0% → 100% | 0d → none |  | constraint none → start no earlier than 2016-10-03 08:00; resources Vinícius [37.5%] → Juliana [12.5%]; Vinícius [12.5%]; baseline start none → 2016-10-21 09:25; baseline finish none → 2016-10-21 15:25 |
| 34 | **Conferir a infraestrutura da empresa** | 2016-09-08 → 2016-10-21 15:25 A (+43d) | 2016-09-19 → 2016-10-24 10:45 A (+35d) | 7.25d? → 0.54d? | 0% → 100% | 6.25d → none |  | baseline start none → 2016-10-21 15:25; baseline finish none → 2016-10-24 10:45 |
| 35 | Verificar quais softwares irão ser usados e ajustar as ferramentas | 2016-09-08 → 2016-10-21 15:25 A (+43d) | 2016-09-09 → 2016-10-24 10:45 A (+45d) | 1d? → 0.67d? | 0% → 100% | 20.8d → none | 9 → 33 | was named Verificar se haverá necessidade de compra de equipamentos e/ou softwares; constraint none → start no earlier than 2016-10-03 08:00; resources José [12.5%] → Fábio [37.5%]; Juliana [37.5%]; baseline start none → 2016-10-21 15:25; baseline finish none → 2016-10-24 10:45 |
| 36 | **Desenvolvimento** | 2016-09-19 → 2016-10-24 10:45 (+35d) | 2016-10-10 → 2016-10-31 14:45 (+21d) | 14.55d? → 5.38d? |  |  | Alocar a equipe no seu local de trabalho → 28 | baseline start none → 2016-10-24 10:45; baseline finish none → 2016-10-31 14:45 |
| 37 | **Release 01** | 2016-09-19 → 2016-10-24 10:45 (+35d) | 2016-10-10 → 2016-10-28 10:15 (+18d) | 14.55d? → 3.94d |  |  | Alocar a equipe no seu local de trabalho → none | baseline start none → 2016-10-24 10:45; baseline finish none → 2016-10-28 10:15 |
| 38 | **Implementação** | 2016-09-19 → 2016-10-24 10:45 (+35d) | 2016-09-28 → 2016-10-25 09:15 (+27d) | 6.72d → 0.81d |  |  |  | baseline start none → 2016-10-24 10:45; baseline finish none → 2016-10-25 09:15 |
| 39 | Implementar RFC01 | 2016-09-22 → 2016-10-24 10:45 (+32d) | 2016-09-27 → 2016-10-25 09:15 (+28d) | 2.25d → 0.94d |  | 3.88d → 3.31d | Alocar a equipe no seu local de trabalho → none | constraint none → start no earlier than 2016-10-03 08:00; resources José → Gabriel; Vinícius; baseline start none → 2016-10-24 10:45; baseline finish none → 2016-10-25 09:15 |
| 40 | Implementar RFC02 | 2016-09-19 → 2016-10-24 10:45 (+35d) | 2016-09-28 → 2016-10-25 09:15 (+27d) | 2.25d → 0.81d |  | 5.78d → 0d | Alocar a equipe no seu local de trabalho → none | constraint none → start no earlier than 2016-10-03 08:00; resources Maria → Fábio; Renam; baseline start none → 2016-10-24 10:45; baseline finish none → 2016-10-25 09:15 |
| 41 | **Teste** | 2016-09-26 → 2016-10-25 09:15 (+29d) | 2016-10-10 → 2016-10-28 10:15 (+18d) | 10.05d? → 3.12d |  |  |  | baseline start none → 2016-10-25 09:15; baseline finish none → 2016-10-28 10:15 |
| 42 | Testar RFC01 | 2016-10-03 → 2016-10-28 08:15 (+25d) | 2016-10-04 → 2016-10-28 10:15 (+24d) | 1.12d? → 0.25d |  | 3.92d → 1.22d |  | constraint none → start no earlier than 2016-10-03 08:00; resources José → Juliana; baseline start none → 2016-10-28 08:15; baseline finish none → 2016-10-28 10:15 |
| 43 | Testar RFC02 | 2016-09-29 → 2016-10-25 09:15 (+26d) | 2016-09-30 → 2016-10-25 11:15 (+25d) | 1.12d → 0.25d |  | 5.8d → 0d |  | constraint none → start no earlier than 2016-10-03 08:00; resources Marcos → Juliana; baseline start none → 2016-10-25 09:15; baseline finish none → 2016-10-25 11:15 |
| 44 | **Release 02** | 2016-09-20 → 2016-10-25 11:15 (+35d) | 2016-10-05 → 2016-10-31 14:15 (+26d) | 11d? → 4.25d? |  | 1.95d → 0d |  | baseline start none → 2016-10-25 11:15; baseline finish none → 2016-10-31 14:15 |
| 45 | **Implementação** | 2016-09-20 → 2016-10-25 11:15 (+35d) | 2016-09-27 → 2016-10-27 14:15 (+30d) | 5.62d? → 2.25d? |  | 1.95d → 0d |  | baseline start none → 2016-10-25 11:15; baseline finish none → 2016-10-27 14:15 |
| 46 | Implementar RFC03 | 2016-09-20 → 2016-10-25 11:15 (+35d) | 2016-09-26 → 2016-10-27 14:15 (+31d) | 2.25d → 0.88d? |  | 6.12d → 1.47d | Alocar a equipe no seu local de trabalho → 43 | constraint none → start no earlier than 2016-10-03 08:00; resources Antônio → Juliana; Renam; baseline start none → 2016-10-25 11:15; baseline finish none → 2016-10-27 14:15 |
| 47 | Implementar RFC04 | 2016-09-19 → 2016-10-25 11:15 (+36d) | 2016-09-22 → 2016-10-26 15:15 (+34d) | 2.25d → 0.75d? |  | 0d → 2.34d | Alocar a equipe no seu local de trabalho → 43 | constraint none → start no earlier than 2016-10-03 08:00; resources Marcos → Fábio; Vinícius; baseline start none → 2016-10-25 11:15; baseline finish none → 2016-10-26 15:15 |
| 48 | Implementar RFC05 | 2016-09-19 → 2016-10-25 11:15 (+36d) | 2016-09-23 → 2016-10-25 16:45 (+32d) | 2.25d → 0.56d? |  | 5.75d → 0d | Alocar a equipe no seu local de trabalho → 43 | constraint none → start no earlier than 2016-10-03 08:00; resources Alexandre → Gabriel; Vinícius; baseline start none → 2016-10-25 11:15; baseline finish none → 2016-10-25 16:45 |
| 50 | **Teste** | 2016-09-21 → 2016-10-25 16:45 (+34d) | 2016-10-05 → 2016-10-31 14:15 (+26d) | 9.75d → 3.69d? |  | 2.67d → 0d |  | baseline start none → 2016-10-25 16:45; baseline finish none → 2016-10-31 14:15 |
| 51 | Testar RFC03 | 2016-09-28 → 2016-10-28 08:45 (+30d) | 2016-09-29 → 2016-10-28 10:45 (+29d) | 1.12d → 0.25d |  | 6.12d → 1.22d |  | constraint none → start no earlier than 2016-10-03 08:00; resources Maria → Fábio; baseline start none → 2016-10-28 08:45; baseline finish none → 2016-10-28 10:45 |
| 52 | Testar RFC04 | 2016-10-05 → 2016-10-28 10:15 (+23d) | 2016-10-10 → 2016-10-28 14:15 (+18d) | 1.12d → 0.25d |  | 0d → 1.06d |  | constraint none → start no earlier than 2016-10-03 08:00; resources Alexandre → Gabriel; baseline start none → 2016-10-28 10:15; baseline finish none → 2016-10-28 14:15 |
| 53 | Testar RFC05 | 2016-09-27 → 2016-10-25 16:45 (+28d) | 2016-09-30 → 2016-10-26 08:45 (+26d) | 1.12d → 0.25d? |  | 5.25d → 0d |  | constraint none → start no earlier than 2016-10-03 08:00; resources Antônio → Renam; baseline start none → 2016-10-25 16:45; baseline finish none → 2016-10-26 08:45 |
| 57 | Implementar RFC06 | 2016-09-19 → 2016-10-27 10:15 (+38d) | 2016-09-20 → 2016-10-28 08:15 (+38d) | 1.38d → 0.75d |  | 1.12d → 1.22d | Alocar a equipe no seu local de trabalho → 53 | constraint none → start no earlier than 2016-10-03 08:00; resources José → Gabriel; Juliana; baseline start none → 2016-10-27 10:15; baseline finish none → 2016-10-28 08:15 |
| 58 | Implementar RFC07 | 2016-09-19 → 2016-10-26 14:45 (+37d) | 2016-09-26 → 2016-10-28 14:15 (+32d) | 1.38d → 0.81d |  | 9.25d → 0.56d | Alocar a equipe no seu local de trabalho → 53 | constraint none → start no earlier than 2016-10-03 08:00; resources Maria → Fábio; Vinícius; baseline start none → 2016-10-26 14:45; baseline finish none → 2016-10-28 14:15 |
| 59 | Implementar RFC08 | 2016-09-22 → 2016-10-26 08:45 (+34d) | 2016-09-22 → 2016-10-26 14:45 (+34d) | 0.88d → 0.5d |  | 7.5d → 0d | 47 → 53 | constraint none → start no earlier than 2016-10-03 08:00; resources Marcos → Gabriel; Renam; baseline start none → 2016-10-26 08:45; baseline finish none → 2016-10-26 14:45 |
| 63 | Testar RFC06 | 2016-09-29 → 2016-10-28 08:15 (+29d) | 2016-09-29 → 2016-10-28 10:15 (+29d) | 0.62d? → 0.25d |  | 6.42d → 1.22d |  | constraint none → start no earlier than 2016-10-03 08:00; resources José → Renam; baseline start none → 2016-10-28 08:15; baseline finish none → 2016-10-28 10:15 |
| 64 | Testar RFC07 | 2016-09-26 → 2016-10-28 14:15 (+32d) | 2016-09-26 → 2016-10-28 16:15 (+32d) | 0.62d? → 0.25d? |  | 9.25d → 0.69d |  | constraint none → start no earlier than 2016-10-03 08:00; resources Marcos → Gabriel; baseline start none → 2016-10-28 14:15; baseline finish none → 2016-10-28 16:15 |
| 65 | Testar RFC08 | 2016-09-26 → 2016-10-26 14:45 (+30d) | 2016-09-28 → 2016-10-26 16:45 (+28d) | 0.62d? → 0.25d? |  | 7.67d → 0d |  | constraint none → start no earlier than 2016-10-03 08:00; resources Maria → Juliana; baseline start none → 2016-10-26 14:45; baseline finish none → 2016-10-26 16:45 |
| 70 | Implementar RFC09 | 2016-09-19 → 2016-10-26 16:45 (+37d) | 2016-09-20 → 2016-10-27 15:45 (+37d) | 0.88d → 1d? |  | 2.25d → 1.15d | Alocar a equipe no seu local de trabalho → 65 | constraint none → start no earlier than 2016-10-03 08:00; resources Antônio → Renam; Vinícius; baseline start none → 2016-10-26 16:45; baseline finish none → 2016-10-27 15:45 |
| 71 | Implementar RFC10 | 2016-09-19 → 2016-10-27 14:45 (+38d) | 2016-09-20 → 2016-10-28 10:15 (+38d) | 0.88d → 0.69d? |  | 3.92d → 1.06d | Alocar a equipe no seu local de trabalho → 65 | constraint none → start no earlier than 2016-10-03 08:00; resources Alexandre → Fábio; Gabriel; baseline start none → 2016-10-27 14:45; baseline finish none → 2016-10-28 10:15 |
| 72 | Implementar RFC11 | 2016-09-21 → 2016-10-26 16:45 (+35d) | 2016-09-21 → 2016-10-28 10:45 (+37d) | 0.75d → 1d? |  | 7.17d → 0d | Alocar a equipe no seu local de trabalho → 65 | constraint none → start no earlier than 2016-10-03 08:00; resources José → Juliana; Vinícius; baseline start none → 2016-10-26 16:45; baseline finish none → 2016-10-28 10:45 |
| 75 | Testar RFC09 | 2016-10-04 → 2016-10-28 16:15 (+24d) | 2016-10-05 → 2016-10-31 08:15 (+26d) | 0.88d? → 0.25d? |  | 2.38d → 0.44d |  | constraint none → start no earlier than 2016-10-03 08:00; resources Alexandre → Gabriel; baseline start none → 2016-10-28 16:15; baseline finish none → 2016-10-31 08:15 |
| 76 | Testar RFC10 | 2016-09-26 → 2016-10-28 10:15 (+32d) | 2016-09-27 → 2016-10-28 14:15 (+31d) | 0.88d → 0.25d? |  | 8.25d → 1.06d |  | constraint none → start no earlier than 2016-10-03 08:00; resources Antônio → Renam; baseline start none → 2016-10-28 10:15; baseline finish none → 2016-10-28 14:15 |
| 77 | Testar RFC11 | 2016-09-28 → 2016-10-31 10:45 (+33d) | 2016-09-28 → 2016-10-31 14:45 (+33d) | 0.88d? → 0.25d? |  | 7.17d → 0d |  | constraint none → start no earlier than 2016-10-03 08:00; resources José → Fábio; baseline start none → 2016-10-31 10:45; baseline finish none → 2016-10-31 14:45 |
| 79 | **Monitoramento e Controle** | 2016-09-22 → 2016-10-31 14:45 (+39d) | 2016-09-23 → 2016-10-31 17:05 (+38d) | 1.5d? → 0.29d? |  | 3.55d → 0d | Testar RFC17 → 36 | baseline start none → 2016-10-31 14:45; baseline finish none → 2016-10-31 17:05 |
| 80 | Acompanhar Projeto | 2016-09-22 → 2016-10-31 14:45 (+39d) | 2016-09-23 → 2016-10-31 17:05 (+38d) | 1.5d? → 0.29d? |  | 3.55d → 0d | Testar RFC17 → 77 | constraint none → start no earlier than 2016-10-03 08:00; resources Vinícius → Fábio; Gabriel; Juliana; baseline start none → 2016-10-31 14:45; baseline finish none → 2016-10-31 17:05 |
| 81 | **Fechamento** | 2016-09-23 → 2016-10-31 17:05 (+38d) | 2016-09-30 → 2016-11-01 15:19 (+32d) | 4.5d → 0.78d |  | 3.55d → 0d | 80 → 79 | baseline start none → 2016-10-31 17:05; baseline finish none → 2016-11-01 15:19 |
| 82 | Revisar Projeto | 2016-09-23 → 2016-10-31 17:05 (+38d) | 2016-09-27 → 2016-11-01 14:05 (+35d) | 2.25d → 0.75d |  | 3.55d → 0.11d |  | constraint none → start no earlier than 2016-10-03 08:00; resources Alexandre → Renam; Vinícius; baseline start none → 2016-10-31 17:05; baseline finish none → 2016-11-01 14:05 |
| 83 | Fazer um comparativo com a Proposta Técnica | 2016-09-28 → 2016-10-31 17:05 (+33d) | 2016-09-30 → 2016-11-01 15:19 (+32d) | 2.25d → 0.78d |  | 3.55d → 0d | 82 → 80 | constraint none → start no earlier than 2016-10-03 08:00; resources Alexandre → Fábio; Juliana; baseline start none → 2016-10-31 17:05; baseline finish none → 2016-11-01 15:19 |
| 84 | **Controle de Mudanças** | 2016-09-30 → 2016-11-01 15:19 (+32d) | 2016-10-04 → 2016-11-01 17:19 (+28d) | 2.25d → 0.25d |  | 3.55d → 0d | 83 → 81 | baseline start none → 2016-11-01 15:19; baseline finish none → 2016-11-01 17:19 |

| ID | Task | Start | Finish | Duration | Total float | Other |
| --- | --- | --- | --- | --- | --- | --- |
| 85 | Realizar mudanças se o projeto não estiver dentro do desejado | 2016-09-30 → 2016-11-01 15:19 (+32d) | 2016-10-04 → 2016-11-01 17:19 (+28d) | 2.25d → 0.25d | 3.55d → 0d | constraint none → start no earlier than 2016-10-03 08:00; resources Alexandre → Fábio; Gabriel; Juliana; Renam; Vinícius; baseline start none → 2016-11-01 15:19; baseline finish none → 2016-11-01 17:19 |

## Version 3 (saved 2016-10-31)

Note of the change: Comecando Implementacao Estudante

Last finish 2016-11-01 → 2016-11-02 (+1d). Complete tasks 21 → 25.

Changed:

| ID | Task | Start | Finish | Duration | Complete | Total float |
| --- | --- | --- | --- | --- | --- | --- |
| 1 | **Projeto Sala de Aula** |  | 2016-11-01 17:19 → 2016-11-02 10:19 (+1d) | 21.92d? → 22.17d? | 37% → 44% |  |
| 36 | **Desenvolvimento** | 2016-10-24 10:45 A | 2016-10-31 14:45 → 2016-10-31 16:45 | 5.38d? → 5.62d? | 0% → 14% |  |
| 37 | **Release 01** | 2016-10-24 10:45 A | 2016-10-28 10:15 → 2016-10-28 09:15 A | 3.94d → 3.81d | 0% → 100% | 0d → none |
| 38 | **Implementação** | 2016-10-24 10:45 A | 2016-10-25 09:15 → 2016-10-25 15:45 A | 0.81d → 1.5d | 0% → 100% | 0d → none |
| 39 | Implementar RFC01 | 2016-10-24 10:45 A | 2016-10-25 09:15 → 2016-10-25 15:45 A | 0.94d → 1.62d | 0% → 100% | 3.31d → none |
| 40 | Implementar RFC02 | 2016-10-24 10:45 A | 2016-10-25 09:15 A |  | 0% → 100% | 0d → none |
| 41 | **Teste** | 2016-10-25 09:15 A | 2016-10-28 10:15 → 2016-10-28 09:15 A | 3.12d → 3d | 0% → 100% | 0d → none |
| 42 | Testar RFC01 | 2016-10-28 08:15 A | 2016-10-28 10:15 → 2016-10-28 09:15 A | 0.25d → 0.12d | 0% → 100% | 1.22d → none |
| 43 | Testar RFC02 | 2016-10-25 09:15 A | 2016-10-25 11:15 → 2016-10-25 10:15 A | 0.25d → 0.12d | 0% → 100% | 0d → none |
| 44 | **Release 02** | 2016-10-25 11:15 → 2016-10-25 10:15 | 2016-10-31 14:15 → 2016-10-31 16:45 | 4.25d? → 4.69d? |  |  |
| 45 | **Implementação** | 2016-10-25 11:15 → 2016-10-25 10:15 | 2016-10-27 14:15 → 2016-10-27 14:45 | 2.25d? → 2.44d? |  |  |
| 46 | Implementar RFC03 | 2016-10-25 11:15 → 2016-10-25 10:15 | 2016-10-27 14:15 → 2016-10-26 09:15 (-1d) |  |  | 1.47d → 3.56d |
| 47 | Implementar RFC04 | 2016-10-25 11:15 → 2016-10-25 10:15 | 2016-10-26 15:15 → 2016-10-26 17:45 | 0.75d? → 0.88d? |  | 2.34d → 2.03d |
| 48 | Implementar RFC05 | 2016-10-25 11:15 → 2016-10-25 14:45 | 2016-10-25 16:45 → 2016-10-26 09:15 (+1d) |  |  |  |
| 49 | Implementar RNFC01 | 2016-10-25 11:15 → 2016-10-25 10:15 | 2016-10-27 10:15 → 2016-10-27 14:45 |  |  | 0.06d → 0d |
| 50 | **Teste** | 2016-10-25 16:45 → 2016-10-26 09:15 (+1d) | 2016-10-31 14:15 → 2016-10-31 16:45 | 3.69d? → 3.81d? |  |  |
| 51 | Testar RFC03 | 2016-10-28 08:45 → 2016-10-26 09:15 (-2d) | 2016-10-28 10:45 → 2016-10-26 11:15 (-2d) |  |  | 1.22d → 3.56d |
| 52 | Testar RFC04 | 2016-10-28 10:15 → 2016-10-28 14:45 | 2016-10-28 14:15 → 2016-10-28 16:45 |  |  | 1.06d → 1d |
| 53 | Testar RFC05 | 2016-10-25 16:45 → 2016-10-26 09:15 (+1d) | 2016-10-26 08:45 → 2016-10-26 11:15 |  |  |  |
| 54 | Testar RNFC01 | 2016-10-28 14:15 → 2016-10-28 16:45 | 2016-10-31 14:15 → 2016-10-31 16:45 |  |  | 0.06d → 0d |
| 55 | **Release 03** | 2016-10-26 08:45 → 2016-10-26 11:15 | 2016-10-31 14:15 → 2016-10-31 16:45 | 3.53d? → 3.56d? |  |  |
| 56 | **Implementação** | 2016-10-26 08:45 → 2016-10-26 11:15 | 2016-10-28 14:15 → 2016-10-28 16:45 | 2.53d? → 2.56d? |  |  |
| 57 | Implementar RFC06 | 2016-10-27 10:15 → 2016-10-27 09:15 | 2016-10-28 08:15 → 2016-10-28 08:45 | 0.75d → 0.94d |  | 1.22d → 1.6d |
| 58 | Implementar RFC07 | 2016-10-26 14:45 → 2016-10-26 17:15 | 2016-10-28 14:15 → 2016-10-28 16:45 |  |  | 0.56d → 0.62d |
| 59 | Implementar RFC08 | 2016-10-26 08:45 → 2016-10-26 11:15 | 2016-10-26 14:45 → 2016-10-26 17:15 |  |  |  |
| 60 | Implementar RNFC02 | 2016-10-26 08:45 → 2016-10-26 11:15 | 2016-10-27 08:45 → 2016-10-27 11:15 |  |  | 0.03d → 0d |
| 61 | Implementar RNFC03 | 2016-10-26 08:45 → 2016-10-26 11:15 | 2016-10-26 14:45 → 2016-10-26 17:15 |  |  | 0.4d → 0.09d |
| 62 | **Teste** | 2016-10-26 14:45 → 2016-10-26 17:15 | 2016-10-31 14:15 → 2016-10-31 16:45 |  |  |  |
| 63 | Testar RFC06 | 2016-10-28 08:15 → 2016-10-28 08:45 | 2016-10-28 10:15 → 2016-10-28 10:45 |  |  | 1.22d → 1.6d |
| 64 | Testar RFC07 | 2016-10-28 14:15 → 2016-10-28 16:45 | 2016-10-28 16:15 → 2016-10-31 08:45 (+3d) |  |  | 0.69d → 0.75d |
| 65 | Testar RFC08 | 2016-10-26 14:45 → 2016-10-26 17:15 | 2016-10-26 16:45 → 2016-10-27 09:15 (+1d) |  |  |  |
| 66 | Testar RNFC02 | 2016-10-28 14:15 → 2016-10-28 16:45 | 2016-10-31 14:15 → 2016-10-31 16:45 |  |  | 0.06d → 0d |
| 67 | Testar RNFC03 | 2016-10-28 10:45 → 2016-10-28 11:15 | 2016-10-31 10:45 → 2016-10-31 11:15 |  |  | 0.38d → 0.56d |
| 68 | **Release 04** | 2016-10-26 16:45 → 2016-10-27 09:15 (+1d) | 2016-10-31 14:45 → 2016-10-31 16:45 | 2.75d? → 2.81d? |  |  |
| 69 | **Implementação** | 2016-10-26 16:45 → 2016-10-27 09:15 (+1d) | 2016-10-28 10:45 → 2016-10-28 14:45 | 1.38d? → 1.56d? |  |  |
| 70 | Implementar RFC09 | 2016-10-26 16:45 → 2016-10-27 09:15 (+1d) | 2016-10-27 15:45 → 2016-10-28 09:15 (+1d) | 1d? → 0.88d? |  | 1.15d → 0.62d |
| 71 | Implementar RFC10 | 2016-10-27 14:45 → 2016-10-27 17:15 | 2016-10-28 10:15 → 2016-10-28 14:45 |  |  | 1.06d → 1d |
| 72 | Implementar RFC11 | 2016-10-26 16:45 → 2016-10-27 15:15 (+1d) | 2016-10-28 10:45 → 2016-10-28 14:15 | 1d? → 0.88d? |  | 0d → 0.44d |
| 73 | Implementar RNFC04 | 2016-10-26 16:45 → 2016-10-27 09:15 (+1d) | 2016-10-27 10:45 → 2016-10-27 15:15 | 0.5d? → 0.62d? |  | 0.06d → 0d |
| 74 | **Teste** | 2016-10-28 10:15 → 2016-10-28 14:45 | 2016-10-31 14:45 → 2016-10-31 16:45 | 1.44d? → 1.25d? |  |  |
| 75 | Testar RFC09 | 2016-10-28 16:15 → 2016-10-31 08:45 (+3d) | 2016-10-31 08:15 → 2016-10-31 10:45 |  |  | 0.44d → 0.6d |
| 76 | Testar RFC10 | 2016-10-28 10:15 → 2016-10-28 14:45 | 2016-10-28 14:15 → 2016-10-28 16:45 |  |  | 1.06d → 1d |
| 77 | Testar RFC11 | 2016-10-31 10:45 → 2016-10-31 11:15 | 2016-10-31 14:45 → 2016-10-31 15:15 |  |  | 0d → 0.19d |
| 78 | Testar RNFC04 | 2016-10-28 14:15 → 2016-10-28 16:45 | 2016-10-31 14:15 → 2016-10-31 16:45 |  |  | 0.06d → 0d |
| 79 | **Monitoramento e Controle** | 2016-10-31 14:45 → 2016-10-31 16:45 | 2016-10-31 17:05 → 2016-11-01 09:05 (+1d) | 0.29d? → 0.17d? |  |  |
| 80 | Acompanhar Projeto | 2016-10-31 14:45 → 2016-10-31 16:45 | 2016-10-31 17:05 → 2016-11-01 09:05 (+1d) |  |  |  |
| 81 | **Fechamento** | 2016-10-31 17:05 → 2016-11-01 09:05 (+1d) | 2016-11-01 15:19 → 2016-11-01 17:19 | 0.78d → 0.9d |  |  |
| 82 | Revisar Projeto | 2016-10-31 17:05 → 2016-11-01 09:05 (+1d) | 2016-11-01 14:05 → 2016-11-01 16:05 |  |  | 0.11d → 0.15d |
| 83 | Fazer um comparativo com a Proposta Técnica | 2016-10-31 17:05 → 2016-11-01 09:05 (+1d) | 2016-11-01 15:19 → 2016-11-01 17:19 |  |  |  |
| 84 | **Controle de Mudanças** | 2016-11-01 15:19 → 2016-11-01 17:19 | 2016-11-01 17:19 → 2016-11-02 10:19 (+1d) |  |  |  |
| 85 | Realizar mudanças se o projeto não estiver dentro do desejado | 2016-11-01 15:19 → 2016-11-01 17:19 | 2016-11-01 17:19 → 2016-11-02 10:19 (+1d) | 0.25d → 0.38d |  |  |

## Version 4 (saved 2016-10-31)

Note of the change: Atualização do cronograma

Last finish stays 2016-11-02.

Changed:

| ID | Task | Finish | Duration | Complete |
| --- | --- | --- | --- | --- |
| 1 | **Projeto Sala de Aula** |  |  | 44% → 43% |
| 36 | **Desenvolvimento** |  |  | 14% → 12% |
| 40 | Implementar RFC02 | 2016-10-25 09:15 A → 2016-10-24 15:15 A (-1d) | 0.81d → 0.31d |  |
